# temp

Schedule from MS Project, 2024-02-21 to 2024-04-24, costs in ₫, A marks actual dates.

## Calendars

- Standard: Mon-Fri 08:00-12:00, 13:00-17:00; Sat-Sun off. Exceptions (off unless hours are given): 2024-04-18 (Giỗ Tỗ Hùng Vương).

## Resources

| Resource | Group | Rate |
| --- | --- | --- |
| Nguyễn Ngọc Cảnh Phong - Quản Lý | Quản Lý | 100000 |
| Trần Văn Huy - Lập Trình Viên 1 | Lập Trình | 40000 |
| Hoàng Thanh Tùng- Kiểm Thử Viên 1 | Kiểm Thử | 50000 |
| Trần Văn Huy - Kĩ Thuật Viên | Kĩ Thuật | 50000 |
| Đỗ Thị Diệu Ái - Phân Tích Viên 2 | Phân Tích | 55000 |
| Hoàng Thị Kiều Oanh - Thiết Kế Giao Diện 2 | Giao Diện | 40000 |
| Nguyễn Ngọc Cảnh Phong - Lập Trình Viên 2 | Lập Trình | 40000 |
| Hoàng Thanh Tùng - Phân Tích Viên 1 | Phân Tích | 55000 |
| Lê Thị Bảo Trâm - Thiết Kế Giao Diện 1 | Giao Diện | 40000 |
| Nguyễn Thị Minh Thư- Kiểm Thử Viên 2 | Kiểm Thử | 40000 |
| Nguyễn Ngọc Cảnh Phong - Thiết Kế Dữ Liệu 1 | Dữ Liệu | 70000 |
| Đỗ Thị Diệu Ái - Thiết Kế Dữ Liệu 2 | Dữ Liệu | 70000 |
| Hoàng Thị Kiều Oanh - Phân Tích Viên 3 | Phân Tích | 55000 |
| Nguyễn Thị Minh Thư - Thiết Kế Dữ Liệu 3 | Dữ Liệu | 70000 |

## Schedule

| ID | WBS | Task | Type | Duration | Start | Finish | Predecessors | Complete | Remaining | Total slack | Constraint | Resources | Work | Actual work | Cost | Actual cost |
| --- | --- | --- | --- | --- | --- | --- | --- | --- | --- | --- | --- | --- | --- | --- | --- | --- |
| 1 | 1 | **XÂY DỰNG HỆ THỐNG QUẢN LÝ KẾT NỐI VÀ CUNG CẤP GIA SƯ TP-HUẾ** |  | 45d? | 2024-02-21 A | 2024-04-24 |  | 3% | 43.47d? | 0d |  |  | 552h | 8h | 25,280,000 | 800,000 |
| 2 | 1.1 | Bản kế hoạch dự án |  | 1d | 2024-02-21 A | 2024-02-21 A |  | 100% |  |  | finish no earlier than 2024-02-21 | Nguyễn Ngọc Cảnh Phong - Quản Lý | 8h | 8h | 800,000 | 800,000 |
| 3 | 1.2 | Thời gian phê duyệt dự án |  | 1d | 2024-02-22 A | 2024-02-22 A | 2 | 100% |  |  | start no earlier than 2024-02-22 |  |  |  |  |  |
| 4 | 1.3 | **Phân Tích** |  | 9d? | 2024-02-21 | 2024-03-05 |  |  |  | 0d |  |  | 56h |  | 3,440,000 |  |
| 5 | 1.3.1 | **Thu Thập, Phân Tích Nhu Cầu Khách Hàng** |  | 1d | 2024-02-21 | 2024-02-21 |  |  |  | 0d |  | Hoàng Thanh Tùng - Phân Tích Viên 1; Đỗ Thị Diệu Ái - Phân Tích Viên 2 | 16h |  | 880,000 |  |
| 6 | 1.3.1.1 | **Trao đổi, thu nhập yêu cầu khách hàng** |  | 1d | 2024-02-21 | 2024-02-21 |  |  |  |  |  |  |  |  |  |  |
| 7 | 1.3.1.1.1 | Gặp mặt, trao đổi với khách hàng |  | 1d? | 2024-02-21 | 2024-02-21 |  |  |  | 0d |  |  |  |  |  |  |
| 8 | 1.3.1.1.2 | Thu nhập, ghi chú các thông tin, nhu cầu của khách hàng |  | 1d | 2024-02-21 | 2024-02-21 |  |  |  | 0d |  |  |  |  |  |  |
| 9 | 1.3.1.2 | **Phân tích nhu cầu khách hàng** |  | 1d | 2024-02-21 | 2024-02-21 |  |  |  |  |  |  |  |  |  |  |
| 10 | 1.3.1.2.1 | Chọn lọc, phân loại các yêu cầu của khách hàng | manual | 1d? | 2024-02-21 | 2024-02-21 |  |  |  |  |  |  |  |  |  |  |
| 11 | 1.3.1.2.2 | Xác định các yêu cầu chức năng và phi chức năng | manual | 1d? | 2024-02-21 | 2024-02-21 |  |  |  |  |  |  |  |  |  |  |
| 12 | 1.3.1.2.3 | Tổng kết những thông tin đã thu nhập và phân tích được | milestone, manual | 0d | 2024-02-21 | 2024-02-21 |  |  |  |  |  |  |  |  |  |  |
| 13 | 1.3.1.2.4 | Xác định những yêu cầu đáp ứng được và không đáp ứng được | manual | 1d? | 2024-02-21 | 2024-02-21 |  |  |  |  |  |  |  |  |  |  |
| 14 | 1.3.2 | **Lên Ý Tưởng, Phân Tích Thông Số Kĩ Thuật** |  | 1d? | 2024-02-21 | 2024-02-22 | 5 |  |  | 0d |  | Hoàng Thanh Tùng - Phân Tích Viên 1; Đỗ Thị Diệu Ái - Phân Tích Viên 2 | 16h |  | 880,000 |  |
| 15 | 1.3.2.1 | **Tổ chức và lên ý tưởng** |  | 1d? | 2024-02-21 | 2024-02-22 |  |  |  | 0d |  |  |  |  |  |  |
| 16 | 1.3.2.1.1 | Tổ chức họp về việc lên ý tưởng và phân tích thông số kĩ thuật | manual | 1d? | 2024-02-21 | 2024-02-22 |  |  |  |  |  |  |  |  |  |  |
| 17 | 1.3.2.1.2 | Xây dựng mô phỏng dự án | manual | 1d? | 2024-02-21 | 2024-02-22 |  |  |  |  |  |  |  |  |  |  |
| 18 | 1.3.2.2 | **Lên kế hoạch chi tiết** |  | 1d? | 2024-02-21 | 2024-02-22 |  |  |  | 0d |  |  |  |  |  |  |
| 19 | 1.3.2.2.1 | Lên kế hoạch chi tiết, dự đoán công việc và người thực hiện dự án | manual | 1d? | 2024-02-21 | 2024-02-22 |  |  |  |  |  |  |  |  |  |  |
| 20 | 1.3.2.2.2 | Phân tích ý tưởng | manual | 1d? | 2024-02-21 | 2024-02-22 |  |  |  |  |  |  |  |  |  |  |
| 21 | 1.3.2.2.3 | Lập bảng phân rã công việc | manual | 1d? | 2024-02-21 | 2024-02-22 |  |  |  |  |  |  |  |  |  |  |
| 22 | 1.3.2.3 | **Phân tích thông số kỹ thuật** |  | 1d? | 2024-02-21 | 2024-02-22 |  |  |  | 0d |  |  |  |  |  |  |
| 23 | 1.3.2.3.1 | Xác định các yêu cầu kỹ thuật của sản phẩm hoặc hệ thống | manual | 1d? | 2024-02-21 | 2024-02-22 |  |  |  |  |  |  |  |  |  |  |
| 24 | 1.3.2.3.2 | Phân tích các thông số kỹ thuật về hiệu suất, dung lượng và độ tin cậy | manual | 1d? | 2024-02-21 | 2024-02-22 |  |  |  |  |  |  |  |  |  |  |

| ID | WBS | Task | Type | Duration | Start | Finish | Predecessors | Total slack | Resources | Work | Cost |
| --- | --- | --- | --- | --- | --- | --- | --- | --- | --- | --- | --- |
| 25 | 1.3.2.4 | **Tổng kết ý dự án** |  | 1d? | 2024-02-21 | 2024-02-22 |  | 0d |  |  |  |
| 26 | 1.3.2.4.1 | Tạo ra kế hoạch chi tiết theo như những thông số kỹ thuật đã tìm hiểu | manual | 1d? | 2024-02-21 | 2024-02-22 |  |  |  |  |  |
| 27 | 1.3.2.4.2 | Tổng kết và chốt ý bản kế hoạch đã được phát triển | manual | 1d? | 2024-02-21 | 2024-02-22 |  |  |  |  |  |
| 28 | 1.3.3 | **Lập Bảng Báo Cáo, Phản Hồi Khách Hàng** |  | 1d? | 2024-02-22 | 2024-02-23 | 14 | 0d | Hoàng Thanh Tùng - Phân Tích Viên 1; Đỗ Thị Diệu Ái - Phân Tích Viên 2 | 16h | 880,000 |
| 29 | 1.3.3.1 | **Lập bảng báo cáo, Phản Hồi Khách Hàng** |  | 1d? | 2024-02-22 | 2024-02-23 |  | 0d |  |  |  |
| 30 | 1.3.3.1.1 | Lập bảng báo cáo về đặc tả hệ thống chi tiết | manual | 1d? | 2024-02-22 | 2024-02-23 |  |  |  |  |  |
| 31 | 1.3.3.1.2 | Lập bảng báo cáo những ưu và nhược điểm của dự án | manual | 1d? | 2024-02-22 | 2024-02-23 |  |  |  |  |  |
| 32 | 1.3.3.1.3 | Tiến hành kiểm tra và đánh giá bản kế hoạch | manual | 1d? | 2024-02-22 | 2024-02-23 |  |  |  |  |  |
| 33 | 1.3.3.2 | **Phản hồi khách hàng** |  | 1d? | 2024-02-22 | 2024-02-23 |  | 0d |  |  |  |
| 34 | 1.3.3.2.1 | Liên hệ với khách hàng để trao đổi về bản dự án dự kiến | manual | 1d? | 2024-02-22 | 2024-02-23 |  |  |  |  |  |
| 35 | 1.3.3.2.2 | Lắng nghe và hiểu rõ ý kiến phản hồi từ khách hàng | manual | 1d? | 2024-02-22 | 2024-02-23 |  |  |  |  |  |
| 36 | 1.3.3.2.3 | Giải quyết mọi thắc mắc và yêu cầu của khách hàng | manual | 1d? | 2024-02-22 | 2024-02-23 |  |  |  |  |  |
| 37 | 1.3.4 | Chờ Phê Duyệt Để Tiến Hành |  | 1d | 2024-02-26 | 2024-02-26 | 28 | 5d | Nguyễn Ngọc Cảnh Phong - Quản Lý | 8h | 800,000 |
| 38 | 1.3.5 | Hoàn Thành Phân Tích | milestone, manual | 0d | 2024-03-05 | 2024-03-05 | 37 |  | Đỗ Thị Diệu Ái - Phân Tích Viên 2 |  |  |
| 39 | 1.4 | **Thiết kế** |  | 8d | 2024-03-05 | 2024-03-15 |  | 0d |  | 88h | 4,000,000 |
| 40 | 1.4.1 | Thiết Kế Cấu Trúc Phần Mềm |  | 2d | 2024-03-05 | 2024-03-06 | 38 | 0d | Lê Thị Bảo Trâm - Thiết Kế Giao Diện 1 | 16h | 640,000 |
| 41 | 1.4.2 | Thiết Kế Giao Diện |  | 2d | 2024-03-07 | 2024-03-08 | 40 | 0d | Hoàng Thị Kiều Oanh - Thiết Kế Giao Diện 2 | 16h | 640,000 |
| 42 | 1.4.3 | Thiết Kế Cơ Sở Dữ Liệu |  | 2d | 2024-03-11 | 2024-03-12 | 41 | 0d | Lê Thị Bảo Trâm - Thiết Kế Giao Diện 1; Hoàng Thị Kiều Oanh - Thiết Kế Giao Diện 2 | 32h | 1,280,000 |
| 43 | 1.4.4 | Thiết Kế Thành Phần Hệ Thống |  | 1d | 2024-03-13 | 2024-03-13 | 42 | 0d | Lê Thị Bảo Trâm - Thiết Kế Giao Diện 1; Hoàng Thị Kiều Oanh - Thiết Kế Giao Diện 2 | 16h | 640,000 |
| 44 | 1.4.5 | Chờ Phê Duyệt Để Tiến Hành |  | 1d | 2024-03-14 | 2024-03-14 | 43 | 0d | Nguyễn Ngọc Cảnh Phong - Quản Lý | 8h | 800,000 |
| 45 | 1.4.6 | Hoàn Thành Thiết kế | milestone, manual | 0d | 2024-03-15 | 2024-03-15 | 44 |  |  |  |  |
| 46 | 1.5 | **Triển Khai** |  | 20d | 2024-03-15 | 2024-04-12 |  | 0d |  | 320h | 12,800,000 |
| 47 | 1.5.1 | Triển Khai Logic Hệ Thông |  | 5d | 2024-03-15 | 2024-03-21 | 45 | 0d | Trần Văn Huy - Lập Trình Viên 1; Nguyễn Ngọc Cảnh Phong - Lập Trình Viên 2 | 80h | 3,200,000 |
| 48 | 1.5.2 | Phát Triển Các Thành Phần CSDL |  | 5d | 2024-03-22 | 2024-03-28 | 47 | 0d | Trần Văn Huy - Lập Trình Viên 1; Nguyễn Ngọc Cảnh Phong - Lập Trình Viên 2 | 80h | 3,200,000 |
| 49 | 1.5.3 | Lập Trình Hệ Thống |  | 5d | 2024-03-29 | 2024-04-04 | 48 | 0d | Trần Văn Huy - Lập Trình Viên 1; Nguyễn Ngọc Cảnh Phong - Lập Trình Viên 2 | 80h | 3,200,000 |
| 50 | 1.5.4 | Đánh Giá Và Tối Ưu Mã Nguồn |  | 5d | 2024-04-05 | 2024-04-11 | 49 | 0d | Trần Văn Huy - Lập Trình Viên 1; Nguyễn Ngọc Cảnh Phong - Lập Trình Viên 2 | 80h | 3,200,000 |
| 51 | 1.5.5 | Hoàn Thành Lập Trình | milestone, manual | 0d | 2024-04-12 | 2024-04-12 | 50 |  |  |  |  |

| ID | WBS | Task | Type | Duration | Start | Finish | Predecessors | Total slack | Resources | Work | Cost |
| --- | --- | --- | --- | --- | --- | --- | --- | --- | --- | --- | --- |
| 52 | 1.6 | **Kiểm Thử** |  | 6d | 2024-04-12 | 2024-04-23 |  | 0d |  | 64h | 3,440,000 |
| 53 | 1.6.1 | Lập Bảng Kế Hoạch Kiểm Thử |  | 1d | 2024-04-12 | 2024-04-12 | 51 | 0d | Hoàng Thanh Tùng- Kiểm Thử Viên 1 | 8h | 400,000 |
| 54 | 1.6.2 | Viết Và Tiến Hành Các Ca Kiểm Thử |  | 1d | 2024-04-15 | 2024-04-15 | 53 | 0d | Hoàng Thanh Tùng- Kiểm Thử Viên 1 | 8h | 400,000 |
| 55 | 1.6.3 | Kiểm Thử Toàn Hệ Thống |  | 1d | 2024-04-16 | 2024-04-16 | 54 | 0d | Hoàng Thanh Tùng- Kiểm Thử Viên 1 | 8h | 400,000 |
| 56 | 1.6.4 | Xác Định Và Sữa Lỗi |  | 2d | 2024-04-17 | 2024-04-19 | 55 | 0d | Hoàng Thanh Tùng- Kiểm Thử Viên 1; Trần Văn Huy - Lập Trình Viên 1 | 32h | 1,440,000 |
| 57 | 1.6.5 | Đánh Giá Cuối Cùng |  | 1d | 2024-04-22 | 2024-04-22 | 56 | 0d | Nguyễn Ngọc Cảnh Phong - Quản Lý | 8h | 800,000 |
| 58 | 1.6.6 | Hoàn Thành Kiểm Thử | milestone, manual | 0d | 2024-04-23 | 2024-04-23 | 57 |  |  |  |  |
| 59 | 1.7 | **Bàn Giao** |  | 2d | 2024-04-23 | 2024-04-24 |  | 0d |  | 16h | 800,000 |
| 60 | 1.7.1 | Cài Đặt Phần Mềm |  | 1d | 2024-04-23 | 2024-04-23 | 58 | 0d | Trần Văn Huy - Kĩ Thuật Viên | 8h | 400,000 |
| 61 | 1.7.2 | Hướng Dẫn Phầm Mềm |  | 1d | 2024-04-24 | 2024-04-24 | 60 | 0d | Trần Văn Huy - Kĩ Thuật Viên | 8h | 400,000 |
